Schedule from OmniPlan, 2011-06-13 to 2011-07-25.
Project start 2011-06-12

## Resources

| Resource | Group |
| --- | --- |
| Architect | staff |
| Developer A | staff |
| Developer B | staff |
| Team | group |

## Schedule

| ID | WBS | Task | Start | Predecessors | Complete | Resources | Work | Actual work |
| --- | --- | --- | --- | --- | --- | --- | --- | --- |
| 1 | 1 | **Code Style Documentation and Training** |  |  |  |  |  |  |
| 2 | 1.1 | Choose coding style |  |  | 100% | Architect | 1h | 1h |
| 3 | 1.2 | Document coding style | 2011-06-13 | 2 |  | Architect | 0.5h |  |
| 4 | 1.3 | Train team in Javadoc | 2011-06-13 |  |  | Architect; Developer A; Developer B | 4h |  |
| 5 | 1.4 | Train team in Junit | 2011-06-14 |  |  | Architect; Developer A; Developer B | 4h |  |
| 6 | 2 | **Maven** |  | 1 |  |  |  |  |
| 7 | 2.1 | Train domain expert | 2011-06-15 |  |  | Developer B | 5h |  |
| 8 | 2.2 | Verify skeleton follows good practices | 2011-06-17 | 7 |  | Developer B | 1h |  |
| 9 | 3 | **Jenkins Integration** |  | 8 |  |  |  |  |
| 10 | 3.1 | Contact Eday and arrange Jenkins building of skeleton | 2011-06-18 |  |  | Developer A | 1h |  |
| 11 | 3.2 | Arrange for Jenkins to run a Burrow Server for Functional Tests | 2011-06-18 | 10 |  | Developer A | 4h |  |
| 12 | 4 | **User Documentation** |  | 1 |  |  |  |  |
| 13 | 4.1 | Train Sphinx domain expert | 2011-06-18 |  |  | Developer B | 6h |  |
| 14 | 4.2 | Contact Sponsor and determine how user documentation will be delievered | 2011-06-15 |  |  | Developer A | 1h |  |
| 15 | 4.3 | Write narrative user documentation | 2011-07-22 | 29FF, 14FF, 13 |  | Developer B; Architect | 10h |  |
| 16 | 5 | **Research and Design** |  |  |  |  |  |  |
| 17 | 5.1 | **Async Model** |  |  |  |  |  |  |
| 18 | 5.1.1 | Research Async in Java | 2011-06-14 |  | 60% | Developer A; Architect | 10h | 6h |
| 19 | 5.1.2 | Decide on Callback vs Futures | 2011-06-18 | 18 |  | Architect | 1h |  |
| 20 | 5.2 | **Server Communication** |  |  |  |  |  |  |
| 21 | 5.2.1 | **HTTP** |  |  |  |  |  |  |
| 22 | 5.2.1.1 | Research HTTP Libraries | 2011-06-14 |  | 62% | Architect | 8h | 5h |
| 23 | 5.2.1.2 | Select HTTP Library | 2011-06-18 | 22, 18 |  | Architect | 0.02h |  |
| 24 | 5.2.2 | **JSON** |  |  |  |  |  |  |
| 25 | 5.2.2.1 | Research JSON Libraries | 2011-06-22 |  |  | Developer B | 2h |  |
| 26 | 5.2.2.2 | Select JSON Library | 2011-06-23 | 25 |  | Architect | 0.08h |  |
| 27 | 5.3 | Design interface of blocking API | 2011-06-25 |  |  | Developer A | 8h |  |
| 28 | 5.4 | Adapt blocking interface for Async use | 2011-07-07 | 19, 27, 41 |  | Architect | 4h |  |

| ID | WBS | Task | Start | Predecessors | Complete | Resources | Work | Actual work |
| --- | --- | --- | --- | --- | --- | --- | --- | --- |
| 29 | 6 | **Implementation and Code Documentation** |  | 1, 8 |  |  |  |  |
| 30 | 6.1 | **Blocking API** |  |  |  |  |  |  |
| 31 | 6.1.1 | **Memory Backend** |  |  |  |  |  |  |
| 32 | 6.1.1.1 | Implement Memory Backend | 2011-06-18 |  | 75% | Developer A | 8h | 6h |
| 33 | 6.1.1.2 | Document Memory Backend | 2011-06-23 | 32FF, 4 |  | Developer A | 2h |  |
| 34 | 6.1.1.3 | Create Direct Unit Tests for Memory Backend | 2011-06-24 | 32FF |  | Developer A | 2h |  |
| 35 | 6.1.2 | Implement Blocking Frontend | 2011-06-23 | 31FF |  | Developer B | 3h |  |
| 36 | 6.1.3 | Document Blocking Frontend | 2011-06-25 | 35FF |  | Developer B | 4h |  |
| 37 | 6.1.4 | Create Blocking Fronend Unit Test Suite | 2011-06-28 | 5, 35 |  | Architect; Developer B | 8h |  |
| 38 | 6.1.5 | **Blocking HTTP Backend** |  |  |  |  |  |  |
| 39 | 6.1.5.1 | Implement Blocking HTTP Backend | 2011-06-30 | 26, 23 |  | Architect | 8h |  |
| 40 | 6.1.5.2 | Document Blocking HTTP Backend | 2011-07-05 | 39FF |  | Architect | 2h |  |
| 41 | 6.1.6 | Extend Blocking Frontend to support HTTP | 2011-07-06 | 38 |  | Architect | 3h |  |
| 42 | 6.1.7 | Develop Integration Tests | 2011-07-02 | 37, 41FF, 11 |  | Developer B | 8h |  |
| 43 | 6.2 | **Async API** |  | 28 |  |  |  |  |
| 44 | 6.2.1 | **Async Memory Backend** |  |  |  |  |  |  |
| 45 | 6.2.1.1 | Implement Async Reactor for Memory Backend | 2011-07-09 |  |  | Architect | 6h |  |
| 46 | 6.2.1.2 | Document Memory Reactor | 2011-07-13 | 45FF |  | Architect | 2h |  |
| 47 | 6.2.2 | Implement Async Frontend | 2011-07-13 | 45 |  | Developer B | 2h |  |
| 48 | 6.2.3 | Document Async Frontend | 2011-07-14 | 47FF |  | Developer B | 2h |  |
| 49 | 6.2.4 | Adapt Test Suite to Async Frontend | 2011-07-14 | 41, 47 |  | Developer A | 8h |  |
| 50 | 6.2.5 | **Async HTTP Backend** |  | 44 |  |  |  |  |
| 51 | 6.2.5.1 | Implement Async HTTP Backend | 2011-07-19 |  |  | Developer A | 10h |  |
| 52 | 6.2.5.2 | Document Async HTTP Backend | 2011-07-25 | 51FF |  | Developer A | 1h |  |
